# FennecBotPlan

How a schedule from MS Project changed from version to version. A marks actual dates.

## Version 1 (saved 2021-05-18)

Note of the change: Create FennecBotPlan.mpp

| ID | WBS | Task | Duration | Start | Finish | Predecessors | Complete | Total float | Constraint |
| --- | --- | --- | --- | --- | --- | --- | --- | --- | --- |
| 1 | 1 | **Fennec Bot** | 85d? | 2021-04-28 A | 2021-07-21 |  | 8% |  |  |
| 2 |  | Lastenheft liegt vor | 1d | 2021-04-28 A | 2021-04-28 A |  | 100% |  | must start on 2021-04-28 |
| 3 | 1.2 | **Konzeptphase** | 21d | 2021-04-29 A | 2021-05-19 A | 2 | 100% |  |  |
| 4 | 1.2.1 | **Pflichtenheft** | 21d | 2021-04-29 A | 2021-05-19 A |  | 100% |  |  |
| 5 |  | Use Cases definieren | 14d | 2021-04-29 A | 2021-05-12 A |  | 100% |  | finish no earlier than 2021-05-12 |
| 6 |  | Workflow erstellen | 7d | 2021-05-13 A | 2021-05-19 A |  | 100% |  |  |
| 7 | 1.3 | **Sprint 1** | 21d | 2021-05-20 | 2021-06-09 | 3 |  | 5d |  |
| 8 | 1.3.1 | **Jetson Nano** | 12d | 2021-05-20 | 2021-05-31 | 3 |  | 21d |  |
| 9 |  | Linux Einarbeitung | 2d | 2021-05-20 | 2021-05-21 |  |  | 21d |  |
| 10 |  | Externen Controller einbinden | 10d | 2021-05-22 | 2021-05-31 | 9 |  | 21d |  |
| 11 |  | Intel Real Sense integrieren | 4d | 2021-05-22 | 2021-05-25 | 9 |  | 36d |  |
| 12 |  | LiDAR Einbindung | 4d | 2021-05-22 | 2021-05-25 | 9 |  | 36d |  |
| 13 |  | ROS Melodic Einarbeitung | 2d | 2021-05-22 | 2021-05-23 | 9 |  | 34d |  |
| 14 |  | ROS Enviroment einbinden | 4d | 2021-05-24 | 2021-05-27 | 13 |  | 34d |  |
| 15 | 1.3.2 | **3D-Modell** | 16d | 2021-05-20 | 2021-06-04 | 3 |  | 5d |  |
| 16 |  | Abmessung vom Racer Bot | 2d | 2021-05-20 | 2021-05-21 |  |  | 5d |  |
| 17 |  | Erstes 3D Modell erstellen und (drucken) | 14d | 2021-05-22 | 2021-06-04 | 16 |  | 5d | finish no later than 2021-06-09 |
| 18 | 1.3.3 | **Intelligenz** | 17d | 2021-05-24 | 2021-06-09 |  |  | 21d |  |
| 19 |  | Autonome Navigation & Umbgebungserkundung | 17d | 2021-05-24 | 2021-06-09 |  |  | 21d | finish no earlier than 2021-06-09 |
| 20 | 1.3.4 | **Jet Racer** | 9d | 2021-06-01 | 2021-06-09 |  |  | 21d |  |
| 21 |  | Fahren mit Controller (NVIDIA) | 9d | 2021-06-01 | 2021-06-09 | 10 |  | 21d |  |
| 22 | 1.4 | **Sprint 2** | 21d | 2021-06-10 | 2021-06-30 | 7 |  | 21d |  |
| 23 | 1.4.1 | **Intelligenz** | 21d | 2021-06-10 | 2021-06-30 |  |  | 21d |  |
| 24 |  | Linienerkennung | 11d | 2021-06-10 | 2021-06-20 |  |  | 21d |  |
| 25 |  | Ballerkennung | 14d | 2021-06-10 | 2021-06-23 |  |  | 28d |  |
| 26 |  | Torerkennung | 14d | 2021-06-10 | 2021-06-23 |  |  | 28d |  |
| 27 |  | Linie abfahren | 10d | 2021-06-21 | 2021-06-30 | 24 |  | 21d |  |
| 28 | 1.4.2 | **3D-Modell** | 21d | 2021-06-10 | 2021-06-30 |  |  | 21d |  |
| 29 |  | Chassis Montage | 3d | 2021-06-10 | 2021-06-12 |  |  | 21d |  |
| 30 |  | Chassis Verbesserungen | 18d | 2021-06-13 | 2021-06-30 | 29 |  | 21d |  |
| 31 | 1.5 | **Sprint 3** | 21d | 2021-07-01 | 2021-07-21 |  |  | 0d |  |
| 32 | 1.5.1 | **Intelligenz** | 21d | 2021-07-01 | 2021-07-21 |  |  | 0d |  |
| 33 |  | Ballsuchalgorithmus | 21d | 2021-07-01 | 2021-07-21 |  |  | 0d | start no earlier than 2021-07-01 |
| 34 |  | Ballführung | 14d | 2021-07-01 | 2021-07-14 |  |  | 7d | start no earlier than 2021-07-01 |
| 35 |  | Hindernis umfahren | 14d | 2021-07-01 | 2021-07-14 |  |  | 0d | start no earlier than 2021-07-01 |
| 36 |  | niedrig-priorisierte Funktionen | 7d | 2021-07-15 | 2021-07-21 | 35 |  | 0d |  |
| 37 | 1.6 | **Qualitätssicherung** | 64d | 2021-04-28 | 2021-06-30 |  |  | 21d |  |
| 38 |  | Testfälle Sprint 1 | 21d | 2021-05-20 | 2021-06-09 | 7FF |  | 42d |  |
| 39 |  | Testfälle Sprint 2 | 21d | 2021-06-10 | 2021-06-30 | 22FF |  | 21d |  |
| 40 |  | Testfälle Sprint 3 | 21d | 2021-04-28 | 2021-05-18 |  |  | 64d |  |
| 41 | 2 | **Projektmanagement** | 84d | 2021-04-29 | 2021-07-21 |  |  | 0d |  |
| 42 |  | Projektplan erstellen | 21d | 2021-04-29 | 2021-05-19 | 2 |  | 0d | finish no later than 2021-05-19 |
| 43 |  | Projektplan & Sprintplanning Sprint 1 | 21d | 2021-05-20 | 2021-06-09 | 42 |  | 0d | finish no later than 2021-06-09 |
| 44 |  | Projektplan & Sprintplanning Sprint 2 | 21d | 2021-06-10 | 2021-06-30 | 43 |  | 0d | finish no later than 2021-06-30 |
| 45 |  | Projektplan & Sprintplanning Sprint 3 | 21d | 2021-07-01 | 2021-07-21 | 44 |  | 0d | finish no later than 2021-07-21 |

## Version 2 (saved 2021-05-19)

Note of the change: Delete Pflichtenheft_FennecBot_v1.pdf

Last finish stays 2021-07-21. Complete tasks 3 → 5.

Added:

| ID | Task | Duration | Start | Finish | Constraint | Resources |
| --- | --- | --- | --- | --- | --- | --- |
| 7 | Funktionalitäten | 8d | 2021-05-12 A | 2021-05-19 A | finish no earlier than 2021-05-19 | Lukas Evers [50%]; Son Khue Nguyen [50%]; Umut Uzunoglu |

Changed:

| ID | Task | Start | Finish | Duration | Complete | Total float | Predecessors | Other |
| --- | --- | --- | --- | --- | --- | --- | --- | --- |
| 1 | **Fennec Bot** |  |  | 85d? → 85d | 8% → 5% | none → 0d |  |  |
| 5 | Use Cases definieren |  | 2021-05-12 A → 2021-04-30 A (-12d) | 14d → 1.5d |  |  |  |  |
| 6 | Workflow erstellen |  | 2021-05-19 A → 2021-05-14 A (-5d) | 7d → 2d |  |  |  |  |
| 10 | Linux Einarbeitung |  |  |  |  |  |  | resources Hien Anh Nguyen Manh; Lukas Evers; Son Khue Nguyen; Umut Uzunoglu → Hien Anh Nguyen Manh; Son Khue Nguyen; Umut Uzunoglu |
| 11 | Externen Controller einbinden |  |  |  |  |  |  | resources Lukas Evers → Lukas Evers [25%] |
| 12 | Intel Real Sense integrieren |  |  |  |  |  |  | resources Umut Uzunoglu → Umut Uzunoglu [50%] |
| 13 | LiDAR Einbindung |  | 2021-05-25 → 2021-05-29 (+4d) | 4d → 8d |  | 36d → 32d |  | resources Lukas Evers → Lukas Evers [25%] |
| 14 | ROS Melodic Einarbeitung |  | 2021-05-23 → 2021-05-25 (+2d) | 2d → 4d |  | 34d → 32d |  | resources Hien Anh Nguyen Manh; Lukas Evers; Son Khue Nguyen; Umut Uzunoglu → Hien Anh Nguyen Manh [50%]; Lukas Evers [50%]; Son Khue Nguyen [50%]; Umut Uzunoglu [50%] |
| 15 | ROS Enviroment einbinden | 2021-05-24 → 2021-05-26 (+2d) | 2021-05-27 → 2021-05-29 (+2d) |  |  | 34d → 32d |  | resources Umut Uzunoglu → Umut Uzunoglu [50%] |
| 16 | **3D-Modell** |  | 2021-06-04 → 2021-06-09 (+5d) | 16d → 21d |  | 5d → 21d |  |  |
| 17 | Abmessung vom Racer Bot |  |  |  |  | 5d → 21d |  | resources Lukas Evers → Lukas Evers [25%] |
| 18 | Erstes 3D Modell erstellen und (drucken) |  | 2021-06-04 → 2021-06-09 (+5d) | 14d → 19d |  | 5d → 21d |  | constraint finish no later than 2021-06-09 → finish no earlier than 2021-06-09; resources Hien Anh Nguyen Manh; Son Khue Nguyen → Hien Anh Nguyen Manh [50%]; Son Khue Nguyen [50%] |
| 19 | **Intelligenz** | 2021-05-24 → 2021-05-27 (+3d) |  | 17d → 14d |  |  |  |  |
| 20 | Autonome Navigation & Umbgebungserkundung | 2021-05-24 → 2021-05-27 (+3d) |  | 17d → 14d |  |  |  | constraint finish no earlier than 2021-06-09 → start no earlier than 2021-05-27; resources Lukas Evers → Lukas Evers [50%] |
| 22 | Fahren mit Controller (NVIDIA) |  |  |  |  |  |  | resources Lukas Evers → Lukas Evers [50%] |
| 38 | **Qualitätssicherung** | 2021-04-28 → 2021-05-20 (+22d) | 2021-06-30 → 2021-07-21 (+21d) | 64d → 63d |  | 21d → 0d |  |  |
| 41 | Testfälle Sprint 3 | 2021-04-28 → 2021-07-01 (+64d) | 2021-05-18 → 2021-07-21 (+64d) |  |  | 64d → 0d | none → 32FF |  |
| 42 | **Projektmanagement** | 2021-04-29 A |  |  | 0% → 25% |  |  |  |
| 43 | Projektplan erstellen | 2021-04-29 A | 2021-05-19 A |  | 0% → 100% | 0d → none |  |  |

## Version 3 (saved 2021-07-21)

Note of the change: final version Projektplan

Last finish stays 2021-07-21. Complete tasks 5 → 33.

Added:

| ID | Task | Duration | Start | Finish | Constraint | Resources |
| --- | --- | --- | --- | --- | --- | --- |
| 28 | Autonome Navigation & Umbgebungserkundung | 11d | 2021-06-10 A | 2021-06-20 A | start no earlier than 2021-05-27 | Lukas Evers [30%] |
| 34 | **3D-Modell** | 15d | 2021-07-01 A | 2021-07-15 A |  |  |
| 35 | Chassis Finalisierung | 15d | 2021-07-01 A | 2021-07-15 A | start no earlier than 2021-07-01 | Hien Anh Nguyen Manh [50%]; Son Khue Nguyen [41.7%] |
| 40 | Autonome Navigation & Umbgebungserkundung | 21d | 2021-07-01 A | 2021-07-21 A | finish no earlier than 2021-07-21 | Lukas Evers [50%] |

Changed:

| ID | Task | Start | Finish | Duration | Complete | Total float | Other |
| --- | --- | --- | --- | --- | --- | --- | --- |
| 1 | **Fennec Bot** |  |  |  | 5% → 97% |  |  |
| 8 | **Sprint 1** | 2021-05-20 A | 2021-06-09 A |  | 0% → 100% | 21d → none |  |
| 9 | **Jetson Nano** | 2021-05-20 A | 2021-05-31 A |  | 0% → 100% | 21d → none |  |
| 10 | Linux Einarbeitung | 2021-05-20 A | 2021-05-21 A |  | 0% → 100% | 21d → none |  |
| 11 | Externen Controller einbinden | 2021-05-22 A | 2021-05-31 A |  | 0% → 100% | 21d → none |  |
| 12 | Intel Real Sense integrieren | 2021-05-22 A | 2021-05-25 A |  | 0% → 100% | 36d → none |  |
| 13 | LiDAR Einbindung | 2021-05-22 A | 2021-05-29 A |  | 0% → 100% | 32d → none |  |
| 14 | ROS Melodic Einarbeitung | 2021-05-22 A | 2021-05-25 A |  | 0% → 100% | 32d → none |  |
| 15 | ROS Enviroment einbinden | 2021-05-26 A | 2021-05-29 A |  | 0% → 100% | 32d → none |  |
| 16 | **3D-Modell** | 2021-05-20 A | 2021-06-09 → 2021-05-31 A (-9d) | 21d → 11.08d | 0% → 100% | 21d → none |  |
| 17 | Abmessung vom Racer Bot | 2021-05-20 A | 2021-05-21 A |  | 0% → 100% | 21d → none |  |
| 18 | Erstes 3D Modell erstellen und (drucken) | 2021-05-22 A | 2021-06-09 → 2021-05-31 A (-9d) | 19d → 9.08d | 0% → 100% | 21d → none |  |
| 19 | **Intelligenz** | 2021-05-27 A | 2021-06-09 A |  | 0% → 100% | 21d → none |  |
| 20 | Autonome Navigation & Umbgebungserkundung | 2021-05-27 A | 2021-06-09 A |  | 0% → 100% | 21d → none |  |
| 21 | **Jet Racer** | 2021-06-01 A | 2021-06-09 A |  | 0% → 100% | 21d → none |  |
| 22 | Fahren mit Controller (NVIDIA) | 2021-06-01 A | 2021-06-09 A |  | 0% → 100% | 21d → none |  |
| 23 | **Sprint 2** | 2021-06-10 A | 2021-06-30 A |  | 0% → 100% | 21d → none |  |
| 24 | **Intelligenz** | 2021-06-10 A | 2021-06-30 A |  | 0% → 100% | 21d → none |  |
| 25 | Linienerkennung | 2021-06-10 → 2021-06-21 A (+11d) | 2021-06-20 → 2021-06-25 A (+5d) | 11d → 5d | 0% → 100% | 21d → none | constraint none → start no earlier than 2021-06-21; resources none → Lukas Evers [30%] |
| 26 | Ballerkennung | 2021-06-10 A | 2021-06-23 → 2021-06-20 A (-3d) | 14d → 11d | 0% → 100% | 28d → none | resources none → Umut Uzunoglu [50%] |
| 27 | Torerkennung | 2021-06-10 → 2021-06-23 A (+13d) | 2021-06-23 → 2021-06-27 A (+4d) | 14d → 5d | 0% → 100% | 28d → none | constraint none → start no earlier than 2021-06-23; resources none → Lukas Evers [30%] |
| 29 | Linie abfahren | 2021-06-21 A | 2021-06-30 A |  | 0% → 100% | 21d → none | constraint none → start no earlier than 2021-06-21; resources none → Umut Uzunoglu |
| 30 | **3D-Modell** | 2021-06-10 A | 2021-06-30 → 2021-06-19 A (-11d) | 21d → 9.25d | 0% → 100% | 21d → none |  |
| 31 | Chassis Montage | 2021-06-10 A | 2021-06-12 A |  | 0% → 100% | 21d → none | resources none → Hien Anh Nguyen Manh; Son Khue Nguyen |
| 32 | Chassis Verbesserungen | 2021-06-13 A | 2021-06-30 → 2021-06-19 A (-11d) | 18d → 6.25d | 0% → 100% | 21d → none | resources none → Hien Anh Nguyen Manh; Son Khue Nguyen [30%] |
| 33 | **Sprint 3** | 2021-07-01 A |  |  | 0% → 92% |  |  |
| 36 | **Intelligenz** | 2021-07-01 A |  |  | 0% → 91% |  |  |
| 37 | Ballsuchalgorithmus | 2021-07-01 A | 2021-07-21 A |  | 0% → 100% | 0d → none |  |
| 38 | Ballführung | 2021-07-01 A | 2021-07-14 A |  | 0% → 100% | 7d → none |  |
| 39 | Hindernis umfahren | 2021-07-01 A | 2021-07-14 A |  | 0% → 100% | 0d → none |  |
| 42 | **Qualitätssicherung** | 2021-05-20 A | 2021-07-21 A |  | 0% → 100% | 0d → none |  |
| 43 | Testfälle Sprint 1 | 2021-05-20 A | 2021-06-09 → 2021-05-23 A (-17d) | 21d → 3.75d | 0% → 100% | 42d → none | resources none → Son Khue Nguyen |
| 44 | Testfälle Sprint 2 | 2021-06-10 A | 2021-06-30 → 2021-06-13 A (-17d) | 21d → 3.75d | 0% → 100% | 21d → none | resources none → Son Khue Nguyen |
| 45 | Testfälle Sprint 3 | 2021-07-01 → 2021-07-16 A (+15d) | 2021-07-21 A | 21d → 5d | 0% → 100% | 0d → none | constraint none → finish no earlier than 2021-07-21; resources none → Son Khue Nguyen |
| 46 | **Projektmanagement** |  | 2021-07-21 A |  | 25% → 100% | 0d → none |  |
| 48 | Projektplan & Sprintplanning Sprint 1 | 2021-05-20 A | 2021-06-09 A |  | 0% → 100% | 0d → none | resources none → Hien Anh Nguyen Manh |
| 49 | Projektplan & Sprintplanning Sprint 2 | 2021-06-10 A | 2021-06-30 A |  | 0% → 100% | 0d → none | resources none → Hien Anh Nguyen Manh |
| 50 | Projektplan & Sprintplanning Sprint 3 | 2021-07-01 A | 2021-07-21 A |  | 0% → 100% | 0d → none | resources none → Hien Anh Nguyen Manh |
